How a schedule from MS Project changed from version to version. A marks actual dates.

## Version 1 (saved 2017-09-19, file cronogramaForoUdec.mpp)

Note of the change: Merge branch '2017' of https://github.com/djmedinapk/Ing_de_software into 2017

| ID | WBS | Task | Duration | Start | Finish | Predecessors | Total float |
| --- | --- | --- | --- | --- | --- | --- | --- |
| 1 | 1 | **ForoUdec** | 37d | 2017-09-18 08:00 | 2017-11-07 18:00 |  |  |
| 2 | 1.1 | **Primera Iteracion** | 37.5d | 2017-09-18 08:00 | 2017-11-07 22:00 |  |  |
| 3 | 1.1.1 | **Planeneacion** | 1.63d | 2017-09-18 08:00 | 2017-09-19 15:02 |  |  |
| 4 |  | Definicion de requisitos | 10h | 2017-09-18 08:00 | 2017-09-19 10:00 |  |  |
| 5 |  | Analisis y Diseño de casos de uso | 4h | 2017-09-18 08:00 | 2017-09-18 12:00 | 4 |  |
| 6 |  | Análsis y Diseño del Modelo de datos | 4h | 2017-09-18 08:00 | 2017-09-18 12:00 | 5 |  |
| 7 |  | Diseño de clases | 10h | 2017-09-18 08:00 | 2017-09-19 10:00 |  |  |
| 8 |  | Análsis y Diseño del Modelo secuencia | 10h | 2017-09-18 08:00 | 2017-09-19 10:00 | 6 |  |
| 9 | 1.1.2 | **Diseño** | 2.38d | 2017-09-18 08:00 | 2017-09-20 11:02 |  |  |
| 10 | 1.1.2.1 | **Diseño de Interfaces del usuario** | 3.62d | 2017-09-18 08:00 | 2017-09-21 13:00 |  |  |
| 11 | 1.1.2.1.1 | **Diseño plantillas** | 2d | 2017-09-18 08:00 | 2017-09-20 02:00 |  | 0d |
| 12 |  | plantilla Pagina Principal- master | 1h | 2017-09-19 10:00 | 2017-09-19 11:00 | 4 |  |
| 13 |  | Plantilla Foro Universidad -master | 1h | 2017-09-19 10:00 | 2017-09-19 11:00 | 4 |  |
| 14 |  | Plantilla Administrador -master | 1h | 2017-09-19 10:00 | 2017-09-19 11:00 | 4 |  |
| 15 | 1.1.2.1.1.4 | **Diseño Interfaz ingreso** | 2d | 2017-09-18 08:00 | 2017-09-20 02:00 |  | 0d |
| 16 |  | Diseño login | 2h | 2017-09-18 08:00 | 2017-09-20 02:00 | 5 |  |
| 17 |  | Diseño registro | 3h | 2017-09-18 23:00 | 2017-09-19 11:00 | 16 |  |
| 18 | 1.1.2.1.2 | **Diseño interfaz perfil** | 1.5d | 2017-09-19 22:00 | 2017-09-21 13:00 |  | 0d |
| 19 |  | ver perfil | 5h | 2017-09-19 22:00 | 2017-09-20 12:00 | 17 |  |
| 20 |  | Editar perfil | 6h | 2017-09-20 22:00 | 2017-09-21 13:00 | 19 |  |
| 21 | 1.1.2.1.3 | **Diseño post** | 2.5d | 2017-09-18 13:00 | 2017-09-20 19:00 |  | 0d |
| 22 |  | Diseño intefaz crear post | 4h | 2017-09-20 13:00 | 2017-09-20 19:00 | 20 |  |
| 23 |  | Diseño interfaz Modificar Post | 6h | 2017-09-18 13:00 | 2017-09-19 11:00 | 22 |  |
| 24 | 1.1.2.1.4 | **Diseño vista post** | 0d | 2017-09-19 23:00 | 2017-09-20 01:00 |  | 0d |
| 25 |  | vista post | 1h | 2017-09-19 23:00 | 2017-09-20 00:00 | 23 |  |
| 26 |  | comentarios | 1h | 2017-09-20 00:00 | 2017-09-20 01:00 | 25 |  |
| 27 |  | puntuacion | 1h | 2017-09-20 00:00 | 2017-09-20 01:00 | 25 |  |
| 28 |  | Diseño funciones BBDD | 1h | 2017-09-18 08:00 | 2017-09-20 15:30 | 27 |  |
| 29 | 1.1.3 | **Construccion** | 37d | 2017-09-18 08:00 | 2017-11-07 22:00 |  | 0d |
| 30 | 1.1.3.1 | **Desarrollo de la master page** | 1.12d | 2017-09-18 08:00 | 2017-09-19 10:00 |  | 0d |
| 31 |  | Master usuario normal | 5h | 2017-09-18 08:00 | 2017-09-18 13:00 | 12 |  |
| 32 |  | Master usuario de la universidad | 5h | 2017-09-18 08:00 | 2017-09-18 13:00 | 13 |  |
| 33 |  | Master Administrador | 10h | 2017-09-18 08:00 | 2017-09-19 10:00 | 14 |  |
| 34 | 1.1.3.2 | **Desarrollo de la interfaz de ingreso** | 0.25d | 2017-09-18 08:00 | 2017-09-18 10:00 |  |  |
| 35 |  | Registro | 3h | 2017-09-22 19:00 | 2017-09-25 12:00 | 28 |  |
| 36 |  | logn | 3h | 2017-09-18 08:00 | 2017-09-26 22:00 | 35 |  |
| 37 | 1.1.3.3 | **Desarrollo de la interfaz de Post** | 8.38d | 2017-09-26 22:00 | 2017-10-09 12:00 |  | 0d |
| 38 |  | Desarrollo interfaz Crear Post | 26h | 2017-09-26 22:00 | 2017-09-29 19:00 | 36 |  |
| 39 |  | Desarrollo interfaz Modifica Post | 10h | 2017-09-29 19:00 | 2017-10-03 11:00 | 38 |  |
| 40 |  | Desarrollo intefaz Vista post | 12h | 2017-10-03 19:00 | 2017-10-05 13:00 | 39 |  |
| 41 |  | agregar Coemntario | 5h | 2017-10-05 22:00 | 2017-10-06 12:00 | 40 |  |
| 42 |  | Interfaz de Puntuacion | 3h | 2017-10-06 19:00 | 2017-10-09 12:00 | 41 |  |
| 43 | 1.1.3.4 | **comprobaciones BBDD** | 1d | 2017-09-18 09:00 | 2017-09-18 19:00 |  |  |
| 44 | 1.1.3.4.1 | **ingreso** | 1d | 2017-09-18 09:00 | 2017-09-18 19:00 |  |  |
| 45 | 1.1.3.4.1.1 | **Comprobacion nuevo ingreso** | 1d | 2017-09-18 09:00 | 2017-09-18 19:00 |  |  |
| 46 |  | Lectura de datos y procesado imágenes | 36h | 2017-09-18 08:00 | 2017-10-02 09:00 | 35 |  |
| 47 |  | Comprobación de resultados en la BBDD y en la interfaz de usuario | 14h | 2017-09-18 08:00 | 2017-10-04 17:00 | 46 |  |
| 48 |  | Validacion de inicio de sesion | 2h | 2017-09-18 08:00 | 2017-09-27 11:00 | 36 |  |
| 49 | 1.1.3.4.2 | **creacion de post** | 1d | 2017-09-18 09:00 | 2017-09-18 19:00 |  |  |
| 50 |  | Lectura de datos y procesado del post | 17.5h | 2017-09-18 08:00 | 2017-10-11 16:30 | 42 |  |
| 51 |  | Comprobación de resultados en la BBDD y en la interfaz de usuario | 155h | 2017-09-18 08:00 | 2017-11-07 22:00 | 50 |  |
| 52 | 1.1.4 | **Entrega** | 24.62d | 2017-09-18 09:00 | 2017-10-20 16:00 |  |  |
| 53 |  | comprobacion de resultados | 2.5d | 2017-09-18 08:00 | 2017-10-18 13:00 | 51 |  |
| 54 |  | generacion de errores o fallos | 17h | 2017-09-18 08:00 | 2017-10-20 16:00 | 53 |  |
| 55 |  | Correcciones de fallos | 72.5h | 2017-09-18 08:00 | 2017-10-02 23:00 | 54 |  |
| 56 | 1.2 | **Segunda iteracion** | 22d | 2017-10-09 08:00 | 2017-11-07 18:00 |  |  |
| 57 | 1.2.1 | **Planeneacion** | 1.63d | 2017-09-18 08:00 | 2017-09-19 15:02 |  |  |
| 58 |  | Definicion de requisitos | 10h | 2017-09-18 08:00 | 2017-09-19 10:00 |  |  |
| 59 |  | Afinamiento a los Casos de uso | 21.5h | 2017-09-18 08:00 | 2017-09-22 20:00 | 58 |  |
| 60 | 1.2.2 | **Diseño** | 2.38d | 2017-09-18 08:00 | 2017-09-20 11:02 |  |  |
| 61 | 1.2.2.1 | **Diseño de Interfaces del usuario** | 2.75d | 2017-09-18 08:00 | 2017-09-20 16:00 |  |  |
| 62 |  | Diseño interfaz home | 2h | 2017-09-25 09:00 | 2017-09-25 11:00 | 59 |  |
| 63 | 1.2.2.1.2 | **Diseño interfaz perfil** | 1.5d | 2017-09-19 08:00 | 2017-09-20 12:00 |  |  |
| 64 |  | ver perfil | 5h | 2017-09-25 22:00 | 2017-09-26 12:00 | 62 |  |
| 65 |  | Editar perfil | 6h | 2017-09-26 22:00 | 2017-09-27 13:00 | 64 |  |
| 66 | 1.2.2.1.3 | **Diseño post** | 2.5d | 2017-09-18 08:00 | 2017-09-20 12:00 |  |  |
| 67 |  | Diseño intefaz crear post | 4h | 2017-09-25 11:00 | 2017-09-25 17:00 | 62 |  |
| 68 |  | Diseño interfaz Modificar Post | 6h | 2017-09-26 19:00 | 2017-09-27 17:00 | 67 |  |
| 69 | 1.2.2.1.4 | **Diseño vista post** | 0d | 2017-09-19 08:00 | 2017-09-19 08:00 |  |  |
| 70 |  | vista post | 1h | 2017-09-25 23:00 | 2017-09-26 00:00 | 62 |  |

| ID | WBS | Task | Duration | Start | Finish | Predecessors | Total float |
| --- | --- | --- | --- | --- | --- | --- | --- |
| 71 |  | comentarios | 1h | 2017-09-26 00:00 | 2017-09-26 01:00 | 70 |  |
| 72 |  | puntuacion | 1h | 2017-09-26 22:00 | 2017-09-26 23:00 | 71 |  |
| 73 |  | Diseño funciones BBDD | 1h | 2017-09-27 12:30 | 2017-09-27 15:30 | 72 |  |
| 74 | 1.2.3 | **Construccion** | 37d | 2017-09-18 08:00 | 2017-11-07 18:00 |  |  |
| 75 | 1.2.3.1 | **Desarrollo de la interfaz home** | 0.25d | 2017-09-18 08:00 | 2017-09-18 10:00 |  |  |
| 76 |  | pagina principal | 3h | 2017-09-22 08:00 | 2017-09-22 11:00 |  |  |
| 77 | 1.2.3.2 | **Desarrollo de la interfaz de Post** | 8.38d | 2017-09-26 08:00 | 2017-10-06 11:02 |  |  |
| 78 |  | Desarrollo interfaz Crear Post | 26h | 2017-09-26 08:00 | 2017-09-29 10:00 |  |  |
| 79 |  | Desarrollo interfaz Modifica Post | 10h | 2017-09-29 08:00 | 2017-10-02 10:00 |  |  |
| 80 |  | Desarrollo intefaz Vista post | 12h | 2017-10-03 08:00 | 2017-10-04 12:00 |  |  |
| 81 |  | agregar Coemntario | 5h | 2017-10-05 08:00 | 2017-10-05 13:00 |  |  |
| 82 |  | Interfaz de Puntuacion | 3h | 2017-10-06 08:00 | 2017-10-06 11:00 |  |  |
| 83 | 1.2.3.3 | **comprobaciones BBDD** | 19.38d | 2017-09-18 08:00 | 2017-10-13 11:00 |  |  |
| 84 |  | validacion de ingreso al post dela unversidad | 2h | 2017-10-06 11:00 | 2017-10-06 13:00 | 82 |  |
| 85 | 1.2.3.3.2 | **ingreso** | 4.5d | 2017-09-18 08:00 | 2017-09-22 12:00 |  |  |
| 86 | 1.2.3.3.2.1 | **Comprobacion nuevo ingreso** | 4.5d | 2017-09-18 08:00 | 2017-09-22 12:00 |  |  |
| 87 |  | Lectura de datos y procesado imágenes | 36h | 2017-10-06 19:00 | 2017-10-13 13:00 | 84 |  |
| 88 |  | Comprobación de resultados en la BBDD y en la interfaz de usuario | 14h | 2017-10-13 19:00 | 2017-10-17 17:00 | 87 |  |
| 89 |  | Validacion de inicio de sesion | 2h | 2017-10-17 19:00 | 2017-10-18 11:00 | 88 |  |
| 90 | 1.2.3.3.3 | **creacion de post** | 19.38d | 2017-09-18 08:00 | 2017-10-13 11:00 |  |  |
| 91 |  | Lectura de datos y procesado del post | 5h | 2017-10-18 12:30 | 2017-10-19 09:30 | 89 |  |
| 92 |  | Comprobación de resultados en la BBDD y en la interfaz de usuario | 155h | 2017-10-20 19:00 | 2017-11-17 12:00 | 91 |  |
| 93 | 1.2.4 | **Entrega** | 9.06d | 2017-09-18 08:00 | 2017-09-28 18:30 |  |  |
| 94 |  | comprobacion de resultados | 2.5d | 2017-11-17 19:00 | 2017-11-22 13:00 | 92 |  |
| 95 |  | generacion de errores o fallos | 17h | 2017-11-22 13:00 | 2017-11-24 16:00 | 94 |  |
| 96 |  | Correcciones de fallos | 10.5h | 2017-11-24 19:00 | 2017-11-28 11:30 | 95 |  |
| 97 | 1.3 | **Tercera iteraccion** | 2.62d | 2017-12-08 09:30 | 2017-12-12 16:30 |  | 0d |
| 98 | 1.3.1 | **Planeacion** | 0.5d | 2017-12-08 09:30 | 2017-12-08 15:30 |  | 0d |
| 99 |  | Definicion de requisitos | 2h | 2017-12-08 09:30 | 2017-12-08 11:30 | 96 |  |
| 100 |  | Afinamiento a los Casos de uso | 2h | 2017-12-08 11:30 | 2017-12-08 15:30 | 99 |  |
| 101 | 1.3.2 | **Diseño** | 0.5d | 2017-12-08 15:30 | 2017-12-11 09:30 |  | 0d |
| 102 | 1.3.2.1 | **Diseño Interfaz de Administrador home** | 0.5d | 2017-12-08 15:30 | 2017-12-11 09:30 |  | 0d |
| 103 |  | Diseño de barra lateral | 4h | 2017-12-08 15:30 | 2017-12-11 09:30 | 100 |  |
| 104 | 1.3.3 | **Construccion** | 1.62d | 2017-12-11 09:30 | 2017-12-12 16:30 |  | 0d |
| 105 |  | Desarrollo pagina principal - home | 5h | 2017-12-11 09:30 | 2017-12-11 16:30 | 103 |  |
| 106 | 1.3.3.2 | **vista tablas** | 1d | 2017-12-11 16:30 | 2017-12-12 16:30 |  | 0d |
| 107 |  | rango | 2h | 2017-12-11 16:30 | 2017-12-11 18:30 | 105 |  |
| 108 |  | categoria | 2h | 2017-12-11 18:30 | 2017-12-12 10:30 | 107 |  |
| 109 |  | usuarios | 2h | 2017-12-12 10:30 | 2017-12-12 12:30 | 108 |  |
| 110 |  | moderadores | 2h | 2017-12-12 12:30 | 2017-12-12 16:30 | 109 |  |
| 111 | 1.3.3.3 | **vista contacto** | 0.25d | 2017-12-11 09:30 | 2017-12-11 11:30 |  | 0d |
| 112 |  | mensajes leidos | 2h | 2017-12-11 09:30 | 2017-12-11 11:30 | 103 |  |
| 113 |  | nuevos mensajes | 2h | 2017-12-11 09:30 | 2017-12-11 11:30 | 103 |  |
| 114 | 1.3.4 | **Entrega** | 0.88d | 2017-12-11 11:30 | 2017-12-12 10:30 |  | 0d |
| 115 |  | comprobacion de resultados | 2h | 2017-12-11 11:30 | 2017-12-11 15:30 | 113 |  |
| 116 |  | generacion de errores o fallos | 2h | 2017-12-11 15:30 | 2017-12-11 17:30 | 115 |  |
| 117 |  | Correcciones de fallos | 3h | 2017-12-11 17:30 | 2017-12-12 10:30 | 116 |  |

## Version 2 (saved 2017-09-25, file cronograma.mpp)

Note of the change: Merge branch '2017' of https://github.com/djmedinapk/Ing_de_software into 2017

Last finish 2017-12-12 → 2017-12-19 (+7d). Complete tasks 0 → 11.

Added:

| ID | Task | Duration | Start | Finish | Predecessors | Resources |
| --- | --- | --- | --- | --- | --- | --- |
| 43 | comprobaciones BBDD | 8h | 2017-10-31 13:00 | 2017-11-01 19:00 | 37 | Eduardo Torrado |
| 80 | **Desarrollo intefaz Vista post** | 3d | 2017-11-26 00:00 | 2017-11-30 02:00 | 77 |  |
| 102 | Diseño Interfaz de Administrador home | 4h | 2017-12-07 00:59 | 2017-12-08 00:59 |  | David Medina |

Removed: 80 Desarrollo intefaz Vista post; 83 comprobaciones BBDD; 102 Diseño Interfaz de Administrador home

Changed:

| ID | Task | Start | Finish | Duration | Complete | Total float | Predecessors | Other |
| --- | --- | --- | --- | --- | --- | --- | --- | --- |
| 1 | **ForoUdec** | 2017-09-18 08:00 → 2017-09-24 13:00 A (+6d) | 2017-11-07 18:00 → 2017-12-19 01:05 (+42d) | 37d → 61d | 0% → 21% | none → 0d |  |  |
| 2 | **Primera Iteracion** | 2017-09-18 08:00 → 2017-09-24 13:00 A (+6d) | 2017-11-07 22:00 → 2017-11-08 18:01 (+1d) | 37.5d → 32.88d | 0% → 40% | none → 0.62d |  |  |
| 3 | **Planeneacion** | 2017-09-18 08:00 → 2017-09-24 13:00 A (+6d) | 2017-09-19 15:02 → 2017-09-30 23:04 A (+11d) | 1.63d → 5d | 0% → 100% |  |  |  |
| 4 | Definicion de requisitos | 2017-09-18 08:00 → 2017-09-24 13:00 A (+6d) | 2017-09-19 10:00 → 2017-09-25 14:01 A (+6d) |  | 0% → 100% |  |  | resources David Medina; Eduardo Torrado; Yesid Valencia → David Medina [40%]; Eduardo Torrado [30%]; Yesid [30%] |
| 5 | Analisis y Diseño de casos de uso | 2017-09-18 08:00 → 2017-09-25 14:01 A (+7d) | 2017-09-18 12:00 → 2017-09-26 18:01 A (+8d) | 4h → 10h | 0% → 100% |  |  | resources David Medina; Eduardo Torrado; Yesid Valencia → David Medina [10%]; Eduardo Torrado [10%]; Yesid [80%] |
| 6 | Análsis y Diseño del Modelo de datos | 2017-09-18 08:00 → 2017-09-26 18:01 A (+8d) | 2017-09-18 12:00 → 2017-09-28 13:02 A (+10d) | 4h → 10h | 0% → 100% |  |  | resources David Medina; Eduardo Torrado; Yesid Valencia → David Medina [80%]; Eduardo Torrado [10%]; Yesid [10%] |
| 7 | Diseño de clases | 2017-09-18 08:00 → 2017-09-28 13:02 A (+10d) | 2017-09-19 10:00 → 2017-09-29 18:03 A (+10d) | 10h → 12h | 0% → 100% |  | none → 6 | resources David Medina; Eduardo Torrado; Yesid Valencia → David Medina [80%]; Eduardo Torrado [10%]; Yesid [10%] |
| 8 | Análsis y Diseño del Modelo secuencia | 2017-09-18 08:00 → 2017-09-29 18:03 A (+11d) | 2017-09-19 10:00 → 2017-09-30 23:04 A (+11d) | 10h → 12h | 0% → 100% |  | 6 → 7 | resources David Medina; Eduardo Torrado; Yesid Valencia → David Medina [40%]; Eduardo Torrado [30%]; Yesid [30%] |
| 9 | **Diseño** | 2017-09-18 08:00 → 2017-09-30 23:04 A (+12d) | 2017-09-20 11:02 → 2017-10-11 19:00 (+21d) | 2.38d → 8d | 0% → 31% | none → 2d | none → 3 |  |
| 10 | **Diseño de Interfaces del usuario** | 2017-09-18 08:00 → 2017-09-30 23:04 A (+12d) | 2017-09-21 13:00 → 2017-10-10 01:00 (+19d) | 3.62d → 6d | 0% → 37% | none → 2d |  |  |
| 11 | **Diseño plantillas** | 2017-09-18 08:00 → 2017-09-30 23:04 A (+12d) | 2017-09-20 02:00 → 2017-10-03 19:00 A (+13d) |  | 0% → 100% | 0d → none |  |  |
| 12 | plantilla Pagina Principal- master | 2017-09-19 10:00 → 2017-09-30 23:04 A (+11d) | 2017-09-19 11:00 → 2017-10-01 23:05 A (+12d) | 1h → 5h | 0% → 100% |  | 4 → none | resources none → David Medina [50%]; Yesid [50%] |
| 13 | Plantilla Foro Universidad -master | 2017-09-19 10:00 → 2017-10-01 23:05 A (+12d) | 2017-09-19 11:00 → 2017-10-03 00:07 A (+14d) | 1h → 6h | 0% → 100% |  | 4 → 12 | resources none → David Medina [50%]; Yesid [50%] |
| 14 | Plantilla Administrador -master | 2017-09-19 10:00 → 2017-10-03 13:00 A (+14d) | 2017-09-19 11:00 → 2017-10-03 19:00 A (+14d) | 1h → 4h | 0% → 100% |  | 4 → 13 | resources none → Eduardo Torrado |
| 15 | **Diseño Interfaz ingreso** | 2017-09-18 08:00 → 2017-10-03 21:00 (+15d) | 2017-09-20 02:00 → 2017-10-04 21:01 (+14d) | 2d → 1d |  | 0d → 2d | none → 11 |  |
| 16 | Diseño login | 2017-09-18 08:00 → 2017-10-03 21:00 (+15d) | 2017-09-20 02:00 → 2017-10-03 23:00 (+13d) |  |  | none → 2d | 5 → none | resources David Medina → Yesid |
| 17 | Diseño registro | 2017-09-18 23:00 → 2017-10-03 23:00 (+15d) | 2017-09-19 11:00 → 2017-10-04 21:01 (+15d) | 3h → 2h |  | none → 2d |  | resources David Medina → Yesid |
| 18 | **Diseño interfaz perfil** | 2017-09-19 22:00 → 2017-10-05 13:00 (+16d) | 2017-09-21 13:00 → 2017-10-06 15:00 (+15d) | 1.5d → 1d |  | 0d → 0.5d | none → 15 |  |
| 19 | ver perfil | 2017-09-19 22:00 → 2017-10-05 13:00 (+16d) | 2017-09-20 12:00 → 2017-10-05 18:00 (+15d) | 5h → 3h |  | none → 0.25d | 17 → none | resources Yesid Valencia → Eduardo Torrado |
| 20 | Editar perfil | 2017-09-20 22:00 → 2017-10-05 18:00 (+15d) | 2017-09-21 13:00 → 2017-10-06 15:00 (+15d) | 6h → 3h |  | none → 0.5d |  | resources Yesid Valencia → Eduardo Torrado |
| 21 | **Diseño post** | 2017-09-18 13:00 → 2017-10-06 21:00 (+18d) | 2017-09-20 19:00 → 2017-10-08 02:00 (+18d) | 2.5d → 0d |  |  | none → 18 |  |
| 22 | Diseño intefaz crear post | 2017-09-20 13:00 → 2017-10-06 21:00 (+16d) | 2017-09-20 19:00 → 2017-10-07 02:00 (+17d) |  |  | none → 0d | 20 → none | resources Eduardo Torrado → David Medina |
| 23 | Diseño interfaz Modificar Post | 2017-09-18 13:00 → 2017-10-07 21:00 (+19d) | 2017-09-19 11:00 → 2017-10-08 02:00 (+19d) | 6h → 4h |  | none → 1d |  | resources Eduardo Torrado → David Medina |
| 24 | **Diseño vista post** | 2017-09-19 23:00 → 2017-10-08 21:00 (+19d) | 2017-09-20 01:00 → 2017-10-10 01:00 (+20d) | 0d → 1d |  | 0d → 2d | none → 21 |  |
| 25 | vista post | 2017-09-19 23:00 → 2017-10-08 21:00 (+19d) | 2017-09-20 00:00 → 2017-10-09 01:01 (+19d) | 1h → 4h |  | none → 2d | 23 → none | resources David Medina → David Medina [50%]; Yesid [50%] |
| 26 | comentarios | 2017-09-20 00:00 → 2017-10-09 01:01 (+19d) | 2017-09-20 01:00 → 2017-10-09 22:01 (+19d) | 1h → 2h |  | none → 2d |  | resources David Medina → David Medina [50%]; Yesid [50%] |
| 27 | puntuacion | 2017-09-20 00:00 → 2017-10-09 22:01 (+19d) | 2017-09-20 01:00 → 2017-10-10 01:00 (+20d) | 1h → 2h |  | none → 2d | 25 → 26 | resources Yesid Valencia → David Medina; Yesid |
| 28 | Diseño funciones BBDD | 2017-09-18 08:00 → 2017-10-10 13:00 (+22d) | 2017-09-20 15:30 → 2017-10-11 19:00 (+21d) | 1h → 8h |  | none → 2d | 27 → 10 |  |
| 29 | **Construccion** | 2017-09-18 08:00 → 2017-10-13 21:00 A (+25d) | 2017-11-07 22:00 → 2017-11-07 02:00 | 37d → 16d | 0% → 15% |  | none → 9 |  |
| 30 | **Desarrollo de la master page** | 2017-09-18 08:00 → 2017-10-13 21:00 A (+25d) | 2017-09-19 10:00 → 2017-10-19 22:01 A (+30d) | 1.12d → 4d | 0% → 100% | 0d → none |  |  |
| 31 | Master usuario normal | 2017-09-18 08:00 → 2017-10-13 21:00 A (+25d) | 2017-09-18 13:00 → 2017-10-14 22:00 A (+26d) |  | 0% → 100% |  | 12 → none | resources David Medina; Eduardo Torrado; Yesid Valencia → David Medina |
| 32 | Master usuario de la universidad | 2017-09-18 08:00 → 2017-10-16 13:00 A (+28d) | 2017-09-18 13:00 → 2017-10-17 14:00 A (+29d) |  | 0% → 100% |  | 13 → 31 | resources David Medina; Eduardo Torrado; Yesid Valencia → Eduardo Torrado |
| 33 | Master Administrador | 2017-09-18 08:00 → 2017-10-18 21:00 A (+30d) | 2017-09-19 10:00 → 2017-10-19 22:01 A (+30d) | 10h → 5h | 0% → 100% |  | 14 → 32 | resources David Medina; Eduardo Torrado; Yesid Valencia → Yesid |
| 34 | **Desarrollo de la interfaz de ingreso** | 2017-09-18 08:00 → 2017-10-20 13:00 (+32d) | 2017-09-18 10:00 → 2017-10-22 14:00 (+34d) | 0.25d → 0.5d |  | none → 0d | none → 30 |  |
| 35 | Registro | 2017-09-22 19:00 → 2017-10-20 13:00 (+28d) | 2017-09-25 12:00 → 2017-10-21 15:00 (+26d) | 3h → 6h |  | none → 0d | 28 → none |  |
| 36 | logn | 2017-09-18 08:00 → 2017-10-21 17:00 (+33d) | 2017-09-26 22:00 → 2017-10-22 14:00 (+26d) |  |  | none → 0d |  |  |
| 37 | **Desarrollo de la interfaz de Post** | 2017-09-26 22:00 → 2017-10-22 21:00 (+26d) | 2017-10-09 12:00 → 2017-10-30 22:08 (+21d) | 8.38d → 6d |  |  | none → 34 |  |
| 38 | Desarrollo interfaz Crear Post | 2017-09-26 22:00 → 2017-10-22 21:00 (+26d) | 2017-09-29 19:00 → 2017-10-24 21:02 (+25d) | 26h → 10h |  | none → 0d | 36 → none | resources David Medina; Eduardo Torrado; Yesid Valencia → David Medina [50%]; Yesid [50%] |
| 39 | Desarrollo interfaz Modifica Post | 2017-09-29 19:00 → 2017-10-24 21:02 (+25d) | 2017-10-03 11:00 → 2017-10-26 21:04 (+23d) |  |  | none → 0d |  | resources David Medina; Eduardo Torrado; Yesid Valencia → David Medina [50%]; Yesid [50%] |
| 40 | Desarrollo intefaz Vista post | 2017-10-03 19:00 → 2017-10-26 21:04 (+23d) | 2017-10-05 13:00 → 2017-10-28 21:06 (+23d) | 12h → 10h |  | none → 0d |  | resources David Medina; Eduardo Torrado; Yesid Valencia → David Medina [50%]; Yesid [50%] |
| 41 | agregar Coemntario | 2017-10-05 22:00 → 2017-10-28 21:06 (+23d) | 2017-10-06 12:00 → 2017-10-30 00:08 (+24d) | 5h → 8h |  | none → 0d |  | resources David Medina; Eduardo Torrado; Yesid Valencia → David Medina [60%]; Yesid [40%] |
| 42 | Interfaz de Puntuacion | 2017-10-06 19:00 → 2017-10-30 00:08 (+24d) | 2017-10-09 12:00 → 2017-10-30 22:08 (+21d) |  |  | none → 0d |  | resources Yesid Valencia; David Medina; Eduardo Torrado → David Medina [20%]; Yesid [80%] |
| 44 | **ingreso** | 2017-09-18 09:00 → 2017-11-02 13:00 (+45d) | 2017-09-18 19:00 → 2017-11-04 19:00 (+47d) | 1d → 1.5d |  | none → 0d | none → 43 |  |
| 45 | **Comprobacion nuevo ingreso** | 2017-09-18 09:00 → 2017-11-02 13:00 (+45d) | 2017-09-18 19:00 → 2017-11-04 14:00 (+47d) | 1d → 1.5d |  | none → 0d |  |  |
| 46 | Lectura de datos y procesado imágenes | 2017-09-18 08:00 → 2017-11-02 13:00 (+45d) | 2017-10-02 09:00 → 2017-11-03 14:00 (+32d) | 36h → 5h |  | none → 0d | 35 → none | resources David Medina; Eduardo Torrado; Yesid Valencia → Eduardo Torrado |
| 47 | Comprobación de resultados en la BBDD y en la interfaz de usuario | 2017-09-18 08:00 → 2017-11-03 14:00 (+46d) | 2017-10-04 17:00 → 2017-11-04 14:00 (+31d) | 14h → 4h |  | none → 0d |  | resources David Medina; Eduardo Torrado; Yesid Valencia → Eduardo Torrado |
| 48 | Validacion de inicio de sesion | 2017-09-18 08:00 → 2017-11-04 14:00 (+47d) | 2017-09-27 11:00 → 2017-11-04 19:00 (+38d) | 2h → 3h |  | none → 0d | 36 → 45 | resources David Medina; Eduardo Torrado; Yesid Valencia → Eduardo Torrado |
| 49 | **creacion de post** | 2017-09-18 09:00 → 2017-11-04 21:00 (+47d) | 2017-09-18 19:00 → 2017-11-07 02:00 (+50d) |  |  | none → 0d | none → 44 |  |
| 50 | Lectura de datos y procesado del post | 2017-09-18 08:00 → 2017-11-04 21:00 (+47d) | 2017-10-11 16:30 → 2017-11-05 23:00 (+25d) | 17.5h → 6h |  | none → 0d | 42 → none | resources David Medina; Eduardo Torrado; Yesid Valencia → David Medina |
| 51 | Comprobación de resultados en la BBDD y en la interfaz de usuario | 2017-09-18 08:00 → 2017-11-06 00:00 (+49d) | 2017-11-07 22:00 → 2017-11-07 02:00 | 155h → 6h |  | none → 0d |  | resources David Medina; Eduardo Torrado; Yesid Valencia → David Medina |
| 52 | **Entrega** | 2017-09-18 09:00 → 2017-11-07 02:00 (+50d) | 2017-10-20 16:00 → 2017-11-08 18:01 (+19d) | 24.62d → 1.88d |  | none → 0.5d | none → 29 |  |
| 53 | comprobacion de resultados | 2017-09-18 08:00 → 2017-11-07 02:00 (+50d) | 2017-10-18 13:00 → 2017-11-07 19:00 (+20d) | 2.5d → 4h |  | none → 0d | 51 → none | resources David Medina; Eduardo Torrado; Yesid Valencia → David Medina [30%]; Eduardo Torrado [40%]; Yesid [30%] |
| 54 | generacion de errores o fallos | 2017-09-18 08:00 → 2017-11-07 19:00 (+50d) | 2017-10-20 16:00 → 2017-11-08 01:01 (+19d) | 17h → 4h |  | none → 0d |  | resources David Medina; Eduardo Torrado; Yesid Valencia → David Medina [30%]; Eduardo Torrado [30%]; Yesid [40%] |
| 55 | Correcciones de fallos | 2017-09-18 08:00 → 2017-11-08 01:01 (+51d) | 2017-10-02 23:00 → 2017-11-08 18:01 (+37d) | 72.5h → 4h |  | none → 0.5d |  | resources David Medina; Eduardo Torrado; Yesid Valencia → David Medina [30%]; Eduardo Torrado [40%]; Yesid [30%] |
| 56 | **Segunda iteracion** | 2017-10-09 08:00 → 2017-11-08 18:01 (+30d) | 2017-11-07 18:00 → 2017-12-06 00:03 (+29d) | 22d → 19.12d |  | none → 0.62d | none → 2 |  |
| 57 | **Planeneacion** | 2017-09-18 08:00 → 2017-11-08 18:01 (+51d) | 2017-09-19 15:02 → 2017-11-09 22:02 (+51d) | 1.63d → 1.12d |  | none → 0.62d |  |  |
| 58 | Definicion de requisitos | 2017-09-18 08:00 → 2017-11-08 18:01 (+51d) | 2017-09-19 10:00 → 2017-11-09 17:01 (+51d) | 10h → 3h |  | none → 0.25d |  | resources David Medina; Eduardo Torrado; Yesid Valencia → David Medina [40%]; Eduardo Torrado [30%]; Yesid [30%] |
| 59 | Afinamiento a los Casos de uso | 2017-09-18 08:00 → 2017-11-09 17:01 (+52d) | 2017-09-22 20:00 → 2017-11-09 22:02 (+48d) | 21.5h → 2h |  | none → 0.25d |  | resources David Medina; Eduardo Torrado; Yesid Valencia → David Medina [80%]; Eduardo Torrado [10%]; Yesid [10%] |
| 60 | **Diseño** | 2017-09-18 08:00 → 2017-11-09 22:02 (+52d) | 2017-09-20 11:02 → 2017-11-19 19:00 (+60d) | 2.38d → 6d |  | none → 0d | none → 57 |  |
| 61 | **Diseño de Interfaces del usuario** | 2017-09-18 08:00 → 2017-11-09 22:02 (+52d) | 2017-09-20 16:00 → 2017-11-11 01:02 (+52d) | 2.75d → 1d |  | none → 0d |  |  |
| 62 | Diseño interfaz home | 2017-09-25 09:00 → 2017-11-09 22:02 (+45d) | 2017-09-25 11:00 → 2017-11-11 01:02 (+47d) | 2h → 6h |  | none → 0d | 59 → none | resources none → David Medina |
| 63 | **Diseño interfaz perfil** | 2017-09-19 08:00 → 2017-11-11 01:02 (+53d) | 2017-09-20 12:00 → 2017-11-12 22:02 (+53d) | 1.5d → 0d |  | none → 0d | none → 61 |  |
| 64 | ver perfil | 2017-09-25 22:00 → 2017-11-11 01:02 (+47d) | 2017-09-26 12:00 → 2017-11-12 00:02 (+47d) | 5h → 3h |  | none → 0d | 62 → none | resources Yesid Valencia → David Medina |
| 65 | Editar perfil | 2017-09-26 22:00 → 2017-11-12 00:02 (+47d) | 2017-09-27 13:00 → 2017-11-12 22:02 (+46d) | 6h → 3h |  | none → 0d |  | resources Yesid Valencia → David Medina |
| 66 | **Diseño post** | 2017-09-18 08:00 → 2017-11-13 13:00 (+56d) | 2017-09-20 12:00 → 2017-11-14 15:00 (+55d) | 2.5d → 1d |  | none → 0.25d | none → 63 |  |
| 67 | Diseño intefaz crear post | 2017-09-25 11:00 → 2017-11-13 13:00 (+49d) | 2017-09-25 17:00 → 2017-11-13 18:00 (+49d) | 4h → 3h |  | none → 0.25d | 62 → none |  |
| 68 | Diseño interfaz Modificar Post | 2017-09-26 19:00 → 2017-11-13 18:00 (+48d) | 2017-09-27 17:00 → 2017-11-14 15:00 (+48d) | 6h → 3h |  | none → 0.5d |  |  |
| 69 | **Diseño vista post** | 2017-09-19 08:00 → 2017-11-14 21:00 (+56d) | 2017-09-19 08:00 → 2017-11-15 23:01 (+57d) | 0d → 1d |  | none → 0d | none → 66 |  |
| 70 | vista post | 2017-09-25 23:00 → 2017-11-14 21:00 (+50d) | 2017-09-26 00:00 → 2017-11-15 00:01 (+50d) | 1h → 3h |  | none → 0d | 62 → none | resources David Medina → Yesid |
| 71 | comentarios | 2017-09-26 00:00 → 2017-11-15 00:01 (+50d) | 2017-09-26 01:00 → 2017-11-15 22:01 (+50d) | 1h → 2h |  | none → 0d |  | resources David Medina → Yesid |

| ID | Task | Start | Finish | Duration | Total float | Predecessors | Other |
| --- | --- | --- | --- | --- | --- | --- | --- |
| 72 | puntuacion | 2017-09-26 22:00 → 2017-11-15 22:01 (+50d) | 2017-09-26 23:00 → 2017-11-15 23:01 (+50d) |  | none → 0d |  | resources Yesid Valencia → Yesid |
| 73 | Diseño funciones BBDD | 2017-09-27 12:30 → 2017-11-16 13:00 (+50d) | 2017-09-27 15:30 → 2017-11-19 19:00 (+53d) | 1h → 16h | none → 0d | 72 → 69 |  |
| 74 | **Construccion** | 2017-09-18 08:00 → 2017-11-19 21:00 (+62d) | 2017-11-07 18:00 → 2017-12-04 23:01 (+27d) | 37d → 11d | none → 0d | none → 60 |  |
| 75 | **Desarrollo de la interfaz home** | 2017-09-18 08:00 → 2017-11-19 21:00 (+62d) | 2017-09-18 10:00 → 2017-11-22 02:00 (+65d) | 0.25d → 2d | none → 0d |  |  |
| 76 | pagina principal | 2017-09-22 08:00 → 2017-11-19 21:00 (+58d) | 2017-09-22 11:00 → 2017-11-22 02:00 (+61d) | 3h → 12h | none → 0d |  | resources Eduardo Torrado → David Medina |
| 77 | **Desarrollo de la interfaz de Post** | 2017-09-26 08:00 → 2017-11-22 13:00 (+57d) | 2017-10-06 11:02 → 2017-11-25 23:03 (+50d) | 8.38d → 2.5d | none → 0d | none → 75 |  |
| 78 | Desarrollo interfaz Crear Post | 2017-09-26 08:00 → 2017-11-22 13:00 (+57d) | 2017-09-29 10:00 → 2017-11-24 21:02 (+56d) | 26h → 20h | none → 0d |  | resources David Medina; Eduardo Torrado; Yesid Valencia → Eduardo Torrado [60%]; Yesid [40%] |
| 79 | Desarrollo interfaz Modifica Post | 2017-09-29 08:00 → 2017-11-24 21:02 (+56d) | 2017-10-02 10:00 → 2017-11-25 23:03 (+54d) |  | none → 0d | none → 78 | resources David Medina; Eduardo Torrado; Yesid Valencia → Eduardo Torrado [60%]; Yesid [40%] |
| 81 | agregar Coemntario | 2017-10-05 08:00 → 2017-11-26 00:00 (+52d) | 2017-10-05 13:00 → 2017-11-28 02:00 (+54d) | 5h → 10h | none → 0d |  | resources David Medina; Eduardo Torrado; Yesid Valencia → David Medina |
| 82 | Interfaz de Puntuacion | 2017-10-06 08:00 → 2017-11-28 21:00 (+53d) | 2017-10-06 11:00 → 2017-11-30 02:00 (+55d) | 3h → 8h | none → 0d | none → 81 | resources Yesid Valencia; David Medina; Eduardo Torrado → David Medina |
| 83 | **comprobaciones BBDD** | 2017-09-18 09:00 → 2017-11-30 13:00 (+73d) | 2017-09-18 19:00 → 2017-12-03 19:00 (+76d) | 1d → 1.5d | none → 0d | none → 80 |  |
| 84 | validacion de ingreso al post dela unversidad | 2017-10-06 11:00 → 2017-11-30 13:00 (+55d) | 2017-10-06 13:00 → 2017-11-30 15:00 (+55d) |  | none → 0d | 82 → none | resources none → Eduardo Torrado |
| 85 | **ingreso** | 2017-09-18 08:00 → 2017-11-30 17:00 (+73d) | 2017-09-22 12:00 → 2017-12-03 15:00 (+72d) | 4.5d → 1.25d | none → 0d | none → 84 |  |
| 86 | **Comprobacion nuevo ingreso** | 2017-09-18 08:00 → 2017-11-30 17:00 (+73d) | 2017-09-22 12:00 → 2017-12-01 19:00 (+70d) | 4.5d → 1.25d | none → 0d |  |  |
| 87 | Lectura de datos y procesado imágenes | 2017-10-06 19:00 → 2017-11-30 17:00 (+55d) | 2017-10-13 13:00 → 2017-12-01 19:00 (+49d) | 36h → 6h | none → 0d | 84 → none | resources David Medina; Eduardo Torrado; Yesid Valencia → Eduardo Torrado |
| 88 | Comprobación de resultados en la BBDD y en la interfaz de usuario | 2017-10-13 19:00 → 2017-12-02 13:00 (+50d) | 2017-10-17 17:00 → 2017-12-03 15:00 (+47d) | 14h → 6h | none → 0d | 87 → 86 | resources David Medina; Eduardo Torrado; Yesid Valencia → Eduardo Torrado |
| 89 | Validacion de inicio de sesion | 2017-10-17 19:00 → 2017-12-03 17:00 (+47d) | 2017-10-18 11:00 → 2017-12-03 19:00 (+46d) |  | none → 0d | 88 → 85 | resources David Medina; Eduardo Torrado; Yesid Valencia → Eduardo Torrado |
| 90 | **creacion de post** | 2017-09-18 08:00 → 2017-12-03 21:00 (+76d) | 2017-10-13 11:00 → 2017-12-04 23:01 (+52d) | 19.38d → 1d | none → 0d | none → 83 |  |
| 91 | Lectura de datos y procesado del post | 2017-10-18 12:30 → 2017-12-03 21:00 (+46d) | 2017-10-19 09:30 → 2017-12-04 21:01 (+46d) | 5h → 4h | none → 0d | 89 → none | resources David Medina; Eduardo Torrado; Yesid Valencia → Yesid |
| 92 | Comprobación de resultados en la BBDD y en la interfaz de usuario | 2017-10-20 19:00 → 2017-12-04 21:01 (+45d) | 2017-11-17 12:00 → 2017-12-04 23:01 (+17d) | 155h → 2h | none → 0d |  | resources David Medina; Eduardo Torrado; Yesid Valencia → Yesid |
| 93 | **Entrega** | 2017-09-18 08:00 → 2017-12-04 23:01 (+77d) | 2017-09-28 18:30 → 2017-12-06 00:03 (+69d) | 9.06d → 1d | none → 0.87d | none → 74 |  |
| 94 | comprobacion de resultados | 2017-11-17 19:00 → 2017-12-04 23:01 (+17d) | 2017-11-22 13:00 → 2017-12-05 14:02 (+13d) | 2.5d → 4h | none → 0.5d | 92 → none | resources David Medina; Eduardo Torrado; Yesid Valencia → David Medina [40%]; Eduardo Torrado [30%]; Yesid [30%] |
| 95 | generacion de errores o fallos | 2017-11-22 13:00 → 2017-12-05 14:02 (+13d) | 2017-11-24 16:00 → 2017-12-05 22:02 (+11d) | 17h → 4h | none → 0.5d |  | resources David Medina; Eduardo Torrado; Yesid Valencia → David Medina [40%]; Eduardo Torrado [30%]; Yesid [30%] |
| 96 | Correcciones de fallos | 2017-11-24 19:00 → 2017-12-05 22:02 (+11d) | 2017-11-28 11:30 → 2017-12-06 00:03 (+8d) | 10.5h → 2h | none → 1d |  | resources David Medina; Eduardo Torrado; Yesid Valencia → David Medina [20%]; Eduardo Torrado [40%]; Yesid [40%] |
| 97 | **Tercera iteraccion** | 2017-12-08 09:30 → 2017-12-06 00:03 (-2d) | 2017-12-12 16:30 → 2017-12-19 01:05 (+7d) | 2.62d → 9d |  | none → 56 |  |
| 98 | **Planeacion** | 2017-12-08 09:30 → 2017-12-06 00:03 (-2d) | 2017-12-08 15:30 → 2017-12-07 00:59 (-1d) | 0.5d → 1d | 0d → 1d |  |  |
| 99 | Definicion de requisitos | 2017-12-08 09:30 → 2017-12-06 00:03 (-2d) | 2017-12-08 11:30 → 2017-12-06 21:59 (-2d) | 2h → 4h | none → 1d | 96 → none | resources Eduardo Torrado → David Medina [60%]; Eduardo Torrado [30%]; Yesid [10%] |
| 100 | Afinamiento a los Casos de uso | 2017-12-08 11:30 → 2017-12-06 21:59 (-2d) | 2017-12-08 15:30 → 2017-12-07 00:59 (-1d) |  | none → 1d |  | resources Yesid Valencia → David Medina |
| 101 | **Diseño** | 2017-12-08 15:30 → 2017-12-07 00:59 (-1d) | 2017-12-11 09:30 → 2017-12-09 00:59 (-2d) | 0.5d → 2d |  | none → 98 |  |
| 103 | Diseño de barra lateral | 2017-12-08 15:30 → 2017-12-08 00:59 | 2017-12-11 09:30 → 2017-12-09 00:59 (-2d) |  | none → 0d | 100 → 102 | resources Yesid Valencia → David Medina |
| 104 | **Construccion** | 2017-12-11 09:30 → 2017-12-09 00:59 (-2d) | 2017-12-12 16:30 → 2017-12-18 00:04 (+6d) | 1.62d → 5d |  | none → 101 |  |
| 105 | Desarrollo pagina principal - home | 2017-12-11 09:30 → 2017-12-09 00:59 (-2d) | 2017-12-11 16:30 → 2017-12-12 21:02 (+1d) | 5h → 12h | none → 0d | 103 → none | resources David Medina → Yesid |
| 106 | **vista tablas** | 2017-12-11 16:30 → 2017-12-13 13:00 (+2d) | 2017-12-12 16:30 → 2017-12-14 19:00 (+2d) | 1d → 1.5d |  | none → 105 |  |
| 107 | rango | 2017-12-11 16:30 → 2017-12-13 13:00 (+2d) | 2017-12-11 18:30 → 2017-12-13 15:00 (+2d) |  | none → 0d | 105 → none | resources Yesid Valencia → Eduardo Torrado |
| 108 | categoria | 2017-12-11 18:30 → 2017-12-13 17:00 (+2d) | 2017-12-12 10:30 → 2017-12-13 19:00 (+1d) |  | none → 0d |  | resources Yesid Valencia → Eduardo Torrado |
| 109 | usuarios | 2017-12-12 10:30 → 2017-12-14 13:00 (+2d) | 2017-12-12 12:30 → 2017-12-14 15:00 (+2d) |  | none → 0d |  | resources Yesid Valencia → Eduardo Torrado |
| 110 | moderadores | 2017-12-12 12:30 → 2017-12-14 17:00 (+2d) | 2017-12-12 16:30 → 2017-12-14 19:00 (+2d) |  | none → 0d |  | resources Yesid Valencia → Eduardo Torrado |
| 111 | **vista contacto** | 2017-12-11 09:30 → 2017-12-14 21:00 (+3d) | 2017-12-11 11:30 → 2017-12-18 00:04 (+7d) | 0.25d → 1d |  | none → 106 |  |
| 112 | mensajes leidos | 2017-12-11 09:30 → 2017-12-14 21:00 (+3d) | 2017-12-11 11:30 → 2017-12-16 23:02 (+5d) | 2h → 10h | none → 0d | 103 → none | resources Eduardo Torrado → Yesid |
| 113 | nuevos mensajes | 2017-12-11 09:30 → 2017-12-16 23:02 (+5d) | 2017-12-11 11:30 → 2017-12-18 00:04 (+7d) | 2h → 5h | none → 0d | 103 → 112 | resources Eduardo Torrado → Yesid |
| 114 | **Entrega** | 2017-12-11 11:30 → 2017-12-18 00:04 (+7d) | 2017-12-12 10:30 → 2017-12-19 01:05 (+7d) | 0.88d → 1d |  | none → 104 |  |
| 115 | comprobacion de resultados | 2017-12-11 11:30 → 2017-12-18 00:04 (+7d) | 2017-12-11 15:30 → 2017-12-18 17:04 (+7d) | 2h → 4h | none → 0d | 113 → none | resources David Medina; Eduardo Torrado; Yesid Valencia → David Medina [40%]; Eduardo Torrado [30%]; Yesid [30%] |
| 116 | generacion de errores o fallos | 2017-12-11 15:30 → 2017-12-18 17:04 (+7d) | 2017-12-11 17:30 → 2017-12-18 23:04 (+7d) | 2h → 4h | none → 0d |  | resources David Medina; Eduardo Torrado; Yesid Valencia → David Medina [40%]; Eduardo Torrado [30%]; Yesid [30%] |
| 117 | Correcciones de fallos | 2017-12-11 17:30 → 2017-12-18 23:04 (+7d) | 2017-12-12 10:30 → 2017-12-19 01:05 (+7d) | 3h → 2h | none → 0d |  | resources David Medina; Eduardo Torrado; Yesid Valencia → David Medina [40%]; Eduardo Torrado [30%]; Yesid [30%] |
